# DNS1

Schedule from MS Project, 2026-10-05 to 2027-05-18, costs in Br.

## Calendars

- Стандартный: Mon-Fri 09:00-13:00, 14:00-18:00; Sat-Sun off. Exceptions (off unless hours are given): 2026-11-06 to 2028-11-06 09:00-13:00, 14:00-17:00 (Предпраздничный день, recurring), 2026-11-07 to 2028-11-07 (День Октябрьской революции , recurring), 2026-12-24 to 2028-12-24 09:00-13:00, 14:00-17:00 (Предпраздничный день, recurring), 2026-12-25 to 2028-12-25 (Рождество Христово, recurring), 2026-12-31 to 2028-12-31 09:00-13:00, 14:00-17:00 (Предпраздничный день, recurring), 2027-01-01 to 2029-01-01 (Новый год, recurring), 2027-01-06 to 2029-01-06 09:00-13:00, 14:00-17:00 (Предпраздничный день, recurring), 2027-01-07 to 2029-01-07 (Рождество Христово, recurring), 2027-03-08 to 2029-03-08 (Международный женский день, recurring), 2027-04-30 to 2029-04-30 (Предпраздничный день, recurring), 2027-05-01 to 2029-05-01 (Праздник труда, recurring), 2027-05-09 to 2030-05-09 (День победы, recurring), 2027-05-10 09:00-13:00, 14:00-17:00 (Предпраздничный день), 2027-05-11 (Радуница, recurring).

## Resources

| Resource | Unit | Rate | Cost per use |
| --- | --- | --- | --- |
| Руководтель проекта |  | 15 |  |
| Программист 1 |  | 14 |  |
| Программист 2 |  | 15 |  |
| Программист 3 |  | 12 |  |
| Бизнес-аналитик |  | 11 |  |
| Тест-инженер |  | 8 |  |
| Технический лидер |  | 17 |  |
| Компьютер | шт. | 2780 |  |
| Сервер | шт. | 3950 |  |
| Принтер | шт. | 315 |  |
| Ноутбук | шт. | 2450 |  |
| МФУ | шт. | 1120 |  |
| Планшет | шт. | 1780 |  |
| Серверная ОС |  |  | 3130 |
| Бумага для принтера | уп. | 15 |  |
| Картридж для принтера | ед. | 115 |  |
| Интернет |  |  |  |

## Schedule

| ID | WBS | Task | Type | Duration | Start | Finish | Predecessors | Total slack | Free slack | Constraint | Resources | Work | Cost |
| --- | --- | --- | --- | --- | --- | --- | --- | --- | --- | --- | --- | --- | --- |
| 1 | 1 | Начало проекта | milestone | 0d | 2026-10-05 | 2026-10-05 |  | 0d |  |  |  |  |  |
| 2 | 2 | **Анализ и сбор требований** |  | 23d | 2026-10-05 | 2026-11-04 |  | 0d |  |  |  | 280h | 16,300 |
| 3 | 2.1 | Встреча с заказчиком |  | 1d | 2026-10-05 | 2026-10-05 | 1 | 0d |  |  | Бизнес-аналитик; Технический лидер; Руководтель проекта; Ноутбук [1 шт.]; Планшет [2 шт.] | 24h | 6,354 |
| 4 | 2.2 | Написание документа требований |  | 10d | 2026-10-06 | 2026-10-19 | 3 | 0d |  |  | Бизнес-аналитик; Технический лидер; Ноутбук [1 шт.]; Интернет [0.1%]; МФУ [1 шт.]; Бумага для принтера [1 уп.] | 160h | 5,875 |
| 5 | 2.3 | Тестирование требований |  | 3d | 2026-10-20 | 2026-10-22 | 4 | 0d |  |  | Тест-инженер | 24h | 192 |
| 6 | 2.4 | Встреча с заказчиком |  | 1d | 2026-10-27 | 2026-10-27 | 5FS+2d | 0d |  |  | Бизнес-аналитик; Руководтель проекта | 16h | 208 |
| 7 | 2.5 | Подготовка договора и устава проекта |  | 4d | 2026-10-28 | 2026-11-02 | 6 | 0d |  |  | Руководтель проекта; Ноутбук [1 шт.]; Принтер [1 шт.]; Картридж для принтера [1 ед.]; Бумага для принтера [1 уп.] | 32h | 3,375 |
| 8 | 2.6 | Согласование договора |  | 1d | 2026-11-03 | 2026-11-03 | 7 | 1d |  |  | Руководтель проекта | 8h | 120 |
| 9 | 2.7 | Согласование устава проекта |  | 2d | 2026-11-03 | 2026-11-04 | 7 | 0d |  |  | Бизнес-аналитик | 16h | 176 |
| 10 | 2.8 | Утверждение договора и устава проекта | milestone | 0d | 2026-11-04 | 2026-11-04 | 8, 9 | 0d |  |  |  |  |  |
| 11 | 3 | **Проектирование решения** |  | 131.5d | 2026-11-05 | 2027-05-18 |  | 0d |  |  |  | 784h | 13,346 |
| 12 | 3.1 | Написание и согласование ТЗ |  | 15d | 2026-11-05 | 2026-11-26 | 10 | 0d |  |  | Бизнес-аналитик; Технический лидер; Компьютер [1 шт.]; Картридж для принтера [1 ед.]; Бумага для принтера [1 уп.]; Интернет [0.1%] | 240h | 6,282 |
| 13 | 3.2 | Утверждение ТЗ | milestone | 0d | 2026-11-26 | 2026-11-26 | 12 | 0d |  |  |  |  |  |
| 14 | 3.3 | Обучение специалистов предметной облвсти |  | 13.33d | 2026-11-26 | 2026-12-15 | 13 | 88.17d | 0d |  | Бизнес-аналитик [30%]; Программист 1 [50%]; Программист 2 [50%]; Программист 3 [50%]; Руководтель проекта [50%]; Тест-инженер [50%] | 192h | 2,400 |
| 15 | 3.4 | Проектирование архитектуры решения |  | 10d | 2026-12-15 | 2026-12-30 | 14 | 88.17d |  |  | Технический лидер [50%] | 40h | 680 |
| 16 | 3.5 | Тестирование архитектуры решения |  | 5d | 2027-05-10 | 2027-05-18 | 15 | 0d |  | as late as possible | Тест-инженер; Технический лидер | 80h | 1,000 |
| 17 | 3.6 | Установка средств разработки и тестирования |  | 8d | 2026-11-26 | 2026-12-08 | 13 | 108.5d |  |  | Технический лидер [50%]; Программист 1 [50%]; Программист 2 [50%]; Программист 3 [50%]; Тест-инженер [50%] | 160h | 2,112 |
| 18 | 3.7 | Написание тест-плана и вариантов тестирования системы |  | 12d | 2026-11-26 | 2026-12-14 | 13 | 0d |  |  | Бизнес-аналитик [50%] | 48h | 528 |
| 19 | 3.8 | Встреча с заказчиком |  | 2.5d | 2026-12-14 | 2026-12-16 | 18 | 0d |  |  | Бизнес-аналитик [40%]; Технический лидер; Руководтель проекта | 24h | 344 |
| 20 | 4 | **Разработка и внутреннее тестирование** |  | 76d | 2026-12-16 | 2027-04-07 |  | 0d |  |  |  | 1432h | 26,360 |
| 21 | 4.1 | Встреча разработчиков, декомпозиция задачб назначение ответственных |  | 1d | 2026-12-16 | 2026-12-17 | 19 | 0d |  |  | Программист 1; Программист 2; Программист 3; Руководтель проекта | 32h | 448 |
| 22 | 4.2 | Программирование |  | 45d | 2026-12-17 | 2027-02-23 | 21 | 0d |  |  | Программист 1; Программист 2; Программист 3; Сервер [1 шт.]; Серверная ОС [50%] | 1080h | 21,840 |
| 23 | 4.3 | Улучшение кода |  | 11d | 2027-02-24 | 2027-03-11 | 22 | 0d |  |  | Технический лидер | 88h | 1,496 |
| 24 | 4.4 | Встреча разработчиков для предварительной демонстрации |  | 1d | 2027-03-12 | 2027-03-12 | 23 | 0d |  |  | Программист 1; Программист 2; Программист 3; Технический лидер | 32h | 464 |
| 25 | 4.5 | Демонстрация заказчику |  | 1d | 2027-03-15 | 2027-03-15 | 24 | 0d |  |  | Бизнес-аналитик; Технический лидер; Руководтель проекта | 24h | 344 |
| 26 | 4.6 | Первая установка решения в среду тестирования |  | 5d | 2027-03-16 | 2027-03-22 | 25 | 0d |  |  | Технический лидер; Тест-инженер | 80h | 1,000 |
| 27 | 4.7 | Прохождение тест-кейсов |  | 12d | 2027-03-23 | 2027-04-07 | 26 | 0d |  |  | Тест-инженер | 96h | 768 |
| 28 | 4.8 | Внутренее тестирование | milestone | 0d | 2027-04-07 | 2027-04-07 | 27 | 0d |  |  |  |  |  |

| ID | WBS | Task | Type | Duration | Start | Finish | Predecessors | Total slack | Resources | Work | Cost |
| --- | --- | --- | --- | --- | --- | --- | --- | --- | --- | --- | --- |
| 29 | 5 | **Тестирование на стороне заказчика** |  | 16d | 2027-04-08 | 2027-04-29 |  | 0d |  | 304h | 4,224 |
| 30 | 5.1 | Первая установка в тестовую среду заказчика |  | 2d | 2027-04-08 | 2027-04-09 | 28 | 0d | Технический лидер; Тест-инженер | 32h | 400 |
| 31 | 5.2 | Поставки бета-версий |  | 4d | 2027-04-12 | 2027-04-15 | 30 | 0d | Технический лидер | 32h | 544 |
| 32 | 5.3 | Доработка и исправление неисправностей |  | 10d | 2027-04-16 | 2027-04-29 | 31 | 0d | Программист 1; Программист 2; Программист 3 | 240h | 3,280 |
| 33 | 5.4 | Прохождение тестирования на стороне заказчика | milestone | 0d | 2027-04-29 | 2027-04-29 | 32 | 0d |  |  |  |
| 34 | 6 | **Внедрение** |  | 10d | 2027-05-03 | 2027-05-18 |  | 0d |  | 80h | 1,314 |
| 35 | 6.1 | Установка на рабочий сервер |  | 3d | 2027-05-03 | 2027-05-05 | 33 | 7d | Технический лидер | 24h | 408 |
| 36 | 6.2 | Написание инструкций |  | 10d | 2027-05-03 | 2027-05-18 | 33 | 0d | Картридж для принтера [1 ед.]; Бумага для принтера [1 уп.]; Руководтель проекта | 40h | 730 |
| 37 | 6.3 | Обучение пользователей |  | 3.33d | 2027-05-03 | 2027-05-06 | 33 | 6.67d | Бизнес-аналитик | 16h | 176 |
| 38 | 6.4 | Завершение внедрения | milestone | 0d | 2027-05-18 | 2027-05-18 | 35, 36, 37 | 0d |  |  |  |
| 39 | 6.5 | Конец проекта | milestone | 0d | 2027-05-18 | 2027-05-18 | 38 | 0d |  |  |  |
