# DNS1

Schedule from MS Project, 2026-10-05 to 2027-05-26, costs in Br, A marks actual dates.

## Calendars

- Стандартный: Mon-Fri 09:00-13:00, 14:00-18:00; Sat-Sun off. Exceptions (off unless hours are given): 2026-11-06 to 2028-11-06 09:00-13:00, 14:00-17:00 (Предпраздничный день, recurring), 2026-11-07 to 2028-11-07 (День Октябрьской революции , recurring), 2026-12-24 to 2028-12-24 09:00-13:00, 14:00-17:00 (Предпраздничный день, recurring), 2026-12-25 to 2028-12-25 (Рождество Христово, recurring), 2026-12-31 to 2028-12-31 09:00-13:00, 14:00-17:00 (Предпраздничный день, recurring), 2027-01-01 to 2029-01-01 (Новый год, recurring), 2027-01-06 to 2029-01-06 09:00-13:00, 14:00-17:00 (Предпраздничный день, recurring), 2027-01-07 to 2029-01-07 (Рождество Христово, recurring), 2027-03-08 to 2029-03-08 (Международный женский день, recurring), 2027-04-30 to 2029-04-30 (Предпраздничный день, recurring), 2027-05-01 to 2029-05-01 (Праздник труда, recurring), 2027-05-09 to 2030-05-09 (День победы, recurring), 2027-05-10 09:00-13:00, 14:00-17:00 (Предпраздничный день), 2027-05-11 (Радуница, recurring).

## Resources

| Resource | Unit | Rate | Cost per use |
| --- | --- | --- | --- |
| Руководтель проекта |  | 15 |  |
| Программист 1 |  | 14 |  |
| Программист 2 |  | 15 |  |
| Программист 3 |  | 12 |  |
| Бизнес-аналитик |  | 11 |  |
| Тест-инженер |  | 8 |  |
| Технический лидер |  | 17 |  |
| Компьютер | шт. | 2780 |  |
| Сервер | шт. | 3950 |  |
| Принтер | шт. | 315 |  |
| Ноутбук | шт. | 2450 |  |
| МФУ | шт. | 1120 |  |
| Планшет | шт. | 1780 |  |
| Серверная ОС |  |  | 3130 |
| Бумага для принтера | уп. | 15 |  |
| Картридж для принтера | ед. | 115 |  |
| Интернет |  |  |  |

## Schedule

| ID | WBS | Task | Type | Duration | Start | Finish | Predecessors | Baseline start | Baseline finish | Baseline duration | Total slack | Free slack | Constraint | Resources | Work | Cost | Baseline cost |
| --- | --- | --- | --- | --- | --- | --- | --- | --- | --- | --- | --- | --- | --- | --- | --- | --- | --- |
| 1 | 1 | Начало проекта | milestone | 0d | 2026-10-05 | 2026-10-05 |  | 2026-10-05 | 2026-10-05 | 0d | 0.51d | 0d |  |  |  |  |  |
| 2 | 2 | **Анализ и сбор требований** |  | 25d | 2026-10-05 | 2026-11-09 |  | 2026-10-05 | 2026-11-09 | 25d | 0.51d |  |  |  | 280h | 16,364 | 16,364 |
| 3 | 2.1 | Встреча с заказчиком |  | 1d | 2026-10-05 | 2026-10-05 | 1 | 2026-10-05 | 2026-10-05 | 1d | 0.51d | 0d |  | Бизнес-аналитик; Технический лидер; Руководтель проекта; Ноутбук [1 шт.]; Планшет [2 шт.] | 24h | 6,354 | 6,354 |
| 4 | 2.2 | Написание документа требований |  | 10d | 2026-10-06 | 2026-10-19 | 3 | 2026-10-06 | 2026-10-19 | 10d | 0.51d | 0d |  | Бизнес-аналитик; Технический лидер; Ноутбук [1 шт.]; Интернет [0.1%]; МФУ [1 шт.]; Бумага для принтера [1 уп.] | 160h | 5,875 | 5,875 |
| 5 | 2.3 | Тестирование требований |  | 3d | 2026-10-20 | 2026-10-22 | 4 | 2026-10-20 | 2026-10-22 | 3d | 0.51d | 0d |  | Тест-инженер | 24h | 192 | 192 |
| 6 | 2.4 | Встреча с заказчиком |  | 1d | 2026-10-27 | 2026-10-27 | 5FS+2d | 2026-10-27 | 2026-10-27 | 1d | 0.51d | 0d |  | Бизнес-аналитик; Руководтель проекта | 16h | 208 | 208 |
| 7 | 2.5 | Подготовка договора и устава проекта |  | 4d | 2026-10-28 | 2026-11-02 | 6 | 2026-10-28 | 2026-11-02 | 4d | 0.51d | 0d |  | Руководтель проекта; Ноутбук [1 шт.]; Принтер [1 шт.]; Картридж для принтера [1 ед.]; Бумага для принтера [1 уп.] | 32h | 3,375 | 3,375 |
| 8 | 2.6 | Согласование договора |  | 2d | 2026-11-03 | 2026-11-04 | 7 | 2026-11-03 | 2026-11-04 | 2d | 2d |  |  | Руководтель проекта [50%] | 8h | 120 | 120 |
| 9 | 2.7 | Согласование устава проекта |  | 4d | 2026-11-03 | 2026-11-09 | 7 | 2026-11-03 | 2026-11-09 | 4d | 0.51d | 0d |  | Руководтель проекта [50%] | 16h | 240 | 240 |
| 10 | 2.8 | Утверждение договора и устава проекта | milestone | 0d | 2026-11-09 | 2026-11-09 | 8, 9 | 2026-11-09 | 2026-11-09 | 0d | 0.51d | 0d |  |  |  |  |  |
| 11 | 3 | **Проектирование решения** |  | 135.83d | 2026-11-09 | 2027-05-26 |  | 2026-11-09 | 2027-05-26 | 135.83d | 0d |  |  |  | 784h | 13,426 | 13,426 |
| 12 | 3.1 | Написание и согласование ТЗ |  | 15d | 2026-11-09 | 2026-11-30 | 10 | 2026-11-09 | 2026-11-30 | 15d | 0.51d | 0d |  | Бизнес-аналитик; Технический лидер; Компьютер [1 шт.]; Картридж для принтера [1 ед.]; Бумага для принтера [1 уп.]; Интернет [0.1%] | 240h | 6,282 | 6,282 |
| 13 | 3.2 | Утверждение ТЗ | milestone | 0d | 2026-11-30 | 2026-11-30 | 12 | 2026-11-30 | 2026-11-30 | 0d | 0.51d | 0d |  |  |  |  |  |
| 14 | 3.3 | Обучение специалистов предметной облвсти |  | 13.33d | 2026-11-30 | 2026-12-17 | 13 | 2026-11-30 | 2026-12-17 | 13.33d | 92.5d | 0d |  | Бизнес-аналитик [30%]; Программист 1 [50%]; Программист 2 [50%]; Программист 3 [50%]; Руководтель проекта [50%]; Тест-инженер [50%] | 192h | 2,400 | 2,400 |
| 15 | 3.4 | Проектирование архитектуры решения |  | 10d | 2026-12-17 | 2027-01-04 | 14 | 2026-12-17 | 2027-01-04 | 10d | 92.5d |  |  | Технический лидер [50%] | 40h | 680 | 680 |
| 16 | 3.5 | Тестирование архитектуры решения |  | 5d | 2027-05-19 | 2027-05-26 | 15 | 2027-05-19 | 2027-05-26 | 5d | 0d |  | as late as possible | Тест-инженер; Технический лидер | 80h | 1,000 | 1,000 |
| 17 | 3.6 | Установка средств разработки и тестирования |  | 8d | 2026-11-30 | 2026-12-10 | 13 | 2026-11-30 | 2026-12-10 | 8d | 112.83d |  |  | Технический лидер [50%]; Программист 1 [50%]; Программист 2 [50%]; Программист 3 [50%]; Руководтель проекта [50%] | 160h | 2,336 | 2,336 |
| 18 | 3.7 | Написание тест-плана и вариантов тестирования системы |  | 12d | 2026-11-30 | 2026-12-16 | 13 | 2026-11-30 | 2026-12-16 | 12d | 0.51d | 0d |  | Тест-инженер [50%] | 48h | 384 | 384 |
| 19 | 3.8 | Встреча с заказчиком |  | 2.5d | 2026-12-16 | 2026-12-18 | 18 | 2026-12-16 | 2026-12-18 | 2.5d | 0.51d | 0d |  | Бизнес-аналитик [40%]; Технический лидер; Руководтель проекта | 24h | 344 | 344 |
| 20 | 4 | **Разработка и внутреннее тестирование** |  | 77d | 2026-12-18 | 2027-04-12 |  | 2026-12-18 | 2027-04-12 | 77d | 0.51d |  |  |  | 1432h | 26,376 | 26,376 |
| 21 | 4.1 | Встреча разработчиков, декомпозиция задачб назначение ответственных |  | 2d | 2026-12-18 | 2026-12-22 | 19 | 2026-12-18 | 2026-12-22 | 2d | 0.51d | 0d |  | Программист 1; Программист 2; Программист 3; Технический лидер [50%] | 32h | 464 | 464 |
| 22 | 4.2 | Программирование |  | 45d | 2026-12-22 | 2027-02-26 | 21 | 2026-12-22 | 2027-02-26 | 45d | 0.51d | 0d |  | Программист 1; Программист 2; Программист 3; Сервер [1 шт.]; Серверная ОС [50%] | 1080h | 21,840 | 21,840 |
| 23 | 4.3 | Улучшение кода |  | 11d | 2027-03-01 | 2027-03-16 | 22 | 2027-03-01 | 2027-03-16 | 11d | 0.51d | 0d |  | Технический лидер | 88h | 1,496 | 1,496 |
| 24 | 4.4 | Встреча разработчиков для предварительной демонстрации |  | 1d | 2027-03-17 | 2027-03-17 | 23 | 2027-03-17 | 2027-03-17 | 1d | 0.51d | 0d |  | Программист 1; Программист 2; Программист 3; Технический лидер | 32h | 464 | 464 |
| 25 | 4.5 | Демонстрация заказчику |  | 1d | 2027-03-18 | 2027-03-18 | 24 | 2027-03-18 | 2027-03-18 | 1d | 0.51d | 0d |  | Бизнес-аналитик; Технический лидер; Руководтель проекта | 24h | 344 | 344 |
| 26 | 4.6 | Первая установка решения в среду тестирования |  | 5d | 2027-03-19 | 2027-03-25 | 25 | 2027-03-19 | 2027-03-25 | 5d | 0.51d | 0d |  | Технический лидер; Тест-инженер | 80h | 1,000 | 1,000 |
| 27 | 4.7 | Прохождение тест-кейсов |  | 12d | 2027-03-26 | 2027-04-12 | 26 | 2027-03-26 | 2027-04-12 | 12d | 0.51d | 0d |  | Тест-инженер | 96h | 768 | 768 |
| 28 | 4.8 | Внутренее тестирование | milestone | 0d | 2027-04-12 | 2027-04-12 | 27 | 2027-04-12 | 2027-04-12 | 0d | 0.51d | 0d |  |  |  |  |  |

| ID | WBS | Task | Type | Duration | Start | Finish | Predecessors | Complete | Remaining | Baseline start | Baseline finish | Baseline duration | Total slack | Resources | Work | Actual work | Cost | Baseline cost | Actual cost |
| --- | --- | --- | --- | --- | --- | --- | --- | --- | --- | --- | --- | --- | --- | --- | --- | --- | --- | --- | --- |
| 29 | 5 | **Тестирование на стороне заказчика** |  | 16d | 2027-04-13 A | 2027-05-05 |  | 6% | 14.98d | 2027-04-13 | 2027-05-05 | 16d | 0d |  | 304.8h | 16.8h | 4,230.4 | 4,224 | 134.4 |
| 30 | 5.1 | Первая установка в тестовую среду заказчика |  | 2d | 2027-04-13 A | 2027-04-14 | 28 | 51% | 0.98d | 2027-04-13 | 2027-04-14 | 2d | 0d | Технический лидер; Тест-инженер | 32.8h | 16.8h | 406.4 | 400 | 134.4 |
| 31 | 5.2 | Поставки бета-версий |  | 4d | 2027-04-15 | 2027-04-20 | 30 |  |  | 2027-04-15 | 2027-04-20 | 4d | 0d | Технический лидер | 32h |  | 544 | 544 |  |
| 32 | 5.3 | Доработка и исправление неисправностей |  | 10d | 2027-04-21 | 2027-05-05 | 31 |  |  | 2027-04-21 | 2027-05-05 | 10d | 0d | Программист 1; Программист 2; Программист 3 | 240h |  | 3,280 | 3,280 |  |
| 33 | 5.4 | Прохождение тестирования на стороне заказчика | milestone | 0d | 2027-05-05 | 2027-05-05 | 32 |  |  | 2027-05-05 | 2027-05-05 | 0d | 0d |  |  |  |  |  |  |
| 34 | 6 | **Внедрение** |  | 13.33d | 2027-05-06 | 2027-05-26 |  |  |  | 2027-05-06 | 2027-05-26 | 13.33d | 0d |  | 80h |  | 1,154 | 1,154 |  |
| 35 | 6.1 | Установка на рабочий сервер |  | 3d | 2027-05-06 | 2027-05-12 | 33 |  |  | 2027-05-06 | 2027-05-12 | 3d | 10.33d | Технический лидер | 24h |  | 408 | 408 |  |
| 36 | 6.2 | Написание инструкций |  | 10d | 2027-05-06 | 2027-05-21 | 33 |  |  | 2027-05-06 | 2027-05-21 | 10d | 3.33d | Бизнес-аналитик; Картридж для принтера [1 ед.]; Бумага для принтера [1 уп.] | 40h |  | 570 | 570 |  |
| 37 | 6.3 | Обучение пользователей |  | 3.33d | 2027-05-21 | 2027-05-26 | 33 |  |  | 2027-05-21 | 2027-05-26 | 3.33d | 0d | Бизнес-аналитик | 16h |  | 176 | 176 |  |
| 38 | 6.4 | Завершение внедрения | milestone | 0d | 2027-05-26 | 2027-05-26 | 35, 36, 37 |  |  | 2027-05-26 | 2027-05-26 | 0d | 0d |  |  |  |  |  |  |
| 39 | 6.5 | Конец проекта | milestone | 0d | 2027-05-26 | 2027-05-26 | 38 |  |  | 2027-05-26 | 2027-05-26 | 0d | 0d |  |  |  |  |  |  |
